Schedule from MS Project, 2017-09-27 to 2018-01-05, A marks actual dates.

## Calendars

- 标准: Mon-Fri 08:00-12:00, 13:00-17:00; Sat-Sun off.

## Resources

| Resource |
| --- |
| 吴安之 |
| 吕莉 |
| 陈董锴 |

## Schedule

| ID | WBS | Task | Type | Duration | Start | Finish | Predecessors | Complete | Remaining | Actual start | Actual finish | Resources | Work | Actual work | 项目调整备注 | 负责人 |
| --- | --- | --- | --- | --- | --- | --- | --- | --- | --- | --- | --- | --- | --- | --- | --- | --- |
| 1 | 1 | **启动** |  | 11d | 2017-09-27 A | 2017-10-11 |  | 100% |  |  | 2017-10-03 |  | 72h | 72h |  |  |
| 2 | 1.1 | 讨论项目内容与简介 | manual | 1d | 2017-09-28 A | 2017-09-28 A |  | 100% |  |  |  | 吕莉; 吴安之; 陈董锴 | 24h | 24h | 课时冲突项目开始时间延迟一天 |  |
| 3 | 1.2 | 软件安装 | manual | 2d | 2017-09-29 A | 2017-10-02 A |  | 100% |  |  |  | 吴安之 | 16h | 16h |  |  |
| 4 | 1.3 | 完成项目计划简介 | manual | 1d | 2017-09-29 A | 2017-09-29 A | 2 | 100% |  |  |  | 陈董锴 | 8h | 8h |  |  |
| 5 | 1.4 | 预先学习 | manual | 3d | 2017-09-29 A | 2017-10-03 A |  | 100% |  |  |  | 吕莉 | 24h | 24h |  |  |
| 6 | 1.5 | 项目介绍以及PPT | milestone, manual | 0d | 2017-09-27 A | 2017-09-27 A |  | 100% |  |  |  |  |  |  |  |  |
| 7 | 2 | **问题定义** |  | 11d | 2017-10-11 A | 2017-10-25 | 1 | 100% |  |  | 2017-10-23 |  | 248h | 248h |  | 陈董锴 |
| 8 | 2.1 | **项目计划拟定** |  | 6d | 2017-10-11 A | 2017-10-18 | 1 | 100% |  |  | 2017-10-16 |  | 64h | 64h |  |  |
| 9 | 2.1.1 | 10月11日小组会议 | manual | 1d | 2017-10-11 A | 2017-10-11 A |  | 100% |  |  |  | 陈董锴; 吕莉; 吴安之 | 24h | 24h | 关于项目计划初定 | 陈董锴 |
| 10 | 2.1.2 | 寻找项目计划模版与后续模版 | manual | 1d | 2017-10-12 A | 2017-10-12 A | 9 | 100% |  |  |  | 陈董锴 | 8h | 8h |  |  |
| 11 | 2.1.3 | 预先绘制甘特图 | manual | 1d | 2017-10-11 A | 2017-10-11 A | 9 | 100% |  |  |  | 吴安之 | 8h | 8h |  |  |
| 12 | 2.1.4 | 完成项目计划引言和概述 | manual | 1d | 2017-10-13 A | 2017-10-13 A | 10 | 100% |  |  |  | 吕莉 | 8h | 8h |  |  |
| 13 | 2.1.5 | 完成项目计划实施与支持条件 | manual | 1d | 2017-10-13 A | 2017-10-13 A | 10 | 100% |  |  |  | 吴安之 | 8h | 8h |  |  |
| 14 | 2.1.6 | 项目计划初稿整体修订 | manual | 1d | 2017-10-16 A | 2017-10-16 A | 12, 13 | 100% |  |  |  | 陈董锴 | 8h | 8h |  |  |
| 15 | 2.1.7 | 项目计划初稿以及PPT | milestone, manual | 0d | 2017-10-11 A | 2017-10-11 A |  | 100% |  |  |  |  |  |  |  |  |
| 16 | 2.2 | **项目计划修订** |  | 6d | 2017-10-18 | 2017-10-25 | 8 | 100% |  | 2017-10-12 | 2017-10-23 |  | 184h | 184h |  |  |
| 17 | 2.2.1 | 10月18日小组会议 | manual | 1d | 2017-10-18 A | 2017-10-18 A |  | 100% |  |  |  | 陈董锴; 吕莉; 吴安之 | 24h | 24h | 关于项目计划的修订以及课程总结 | 吕莉 |
| 18 | 2.2.2 | 甘特图修订 | manual | 4d | 2017-10-12 A | 2017-10-17 A | 11, 17 | 100% |  |  |  | 吴安之 | 32h | 32h |  |  |
| 19 | 2.2.3 | 组织分解结构与工作分解结构拟定（OBS,WBS） | manual | 4d | 2017-10-18 A | 2017-10-22 A | 17 | 100% |  |  |  | 吴安之 | 32h | 32h |  |  |
| 20 | 2.2.4 | 项目计划修订 | manual | 6d | 2017-10-16 A | 2017-10-23 A | 14, 17 | 100% |  |  |  | 吕莉 | 48h | 48h |  |  |
| 21 | 2.2.5 | 项目logo设计 | manual | 6d | 2017-10-16 A | 2017-10-23 A | 14, 17 | 100% |  |  |  | 吕莉 | 48h | 48h |  |  |
| 22 | 2.2.6 | 项目计划修订稿以及PPT | milestone, manual | 0d | 2017-10-18 A | 2017-10-18 A |  | 100% |  |  |  |  |  |  |  |  |
| 23 | 3 | **可行性研究** |  | 18d | 2017-10-18 A | 2017-11-10 | 16 | 66% | 6.21d |  |  |  | 296h | 152h |  | 吕莉 |
| 24 | 3.1 | **可行性分析报告初稿** |  | 6d | 2017-10-18 A | 2017-10-25 | 14 | 100% |  |  | 2017-10-24 |  | 56h | 56h | 为了按时达成可交付成果将此项目提前到上一个项目之前 |  |
| 25 | 3.1.1 | 提前预习与提前教学可行性分析 | manual | 1d | 2017-10-21 A | 2017-10-21 A |  | 100% |  |  |  | 陈董锴 | 8h | 8h |  |  |
| 26 | 3.1.2 | 操作可行性分析 | manual | 2d | 2017-10-23 A | 2017-10-24 A | 25 | 100% |  |  |  | 陈董锴 | 16h | 16h |  |  |
| 27 | 3.1.3 | 技术可行性分析 | manual | 2d | 2017-10-23 A | 2017-10-24 A | 25 | 100% |  |  |  | 吴安之 | 16h | 16h |  |  |
| 28 | 3.1.4 | 经济可行性分析 | manual | 2d | 2017-10-23 A | 2017-10-24 A | 25 | 100% |  |  |  | 吕莉 | 16h | 16h |  |  |
| 29 | 3.1.5 | 可行性分析报告初稿 | milestone, manual | 0d | 2017-10-18 A | 2017-10-18 A |  | 100% |  |  |  |  |  |  |  |  |

| ID | WBS | Task | Type | Duration | Start | Finish | Predecessors | Complete | Remaining | Resources | Work | Actual work | 负责人 | 项目调整备注 |
| --- | --- | --- | --- | --- | --- | --- | --- | --- | --- | --- | --- | --- | --- | --- |
| 30 | 3.2 | **可行性分析报告修订** |  | 9d | 2017-10-25 A | 2017-11-05 | 24 | 92% | 0.69d |  | 120h | 96h |  |  |
| 31 | 3.2.1 | 10月25日小组会议 | manual | 1d | 2017-10-25 | 2017-10-25 |  |  |  | 陈董锴; 吕莉; 吴安之 | 24h |  | 吴安之 | 总结可行性研究的注意点与之前的错误并改进分配任务 |
| 32 | 3.2.2 | 操作可行性分析报告更改 | manual | 4d | 2017-10-25 A | 2017-10-30 A | 26, 31 | 100% |  | 陈董锴 | 32h | 32h |  |  |
| 33 | 3.2.3 | 技术可行性分析报告更改 | manual | 4d | 2017-10-25 A | 2017-10-30 A | 27, 31 | 100% |  | 吴安之 | 32h | 32h |  |  |
| 34 | 3.2.4 | 经济可行性分析报告更改 | manual | 4d | 2017-10-25 A | 2017-10-30 A | 28, 31 | 100% |  | 吕莉 | 32h | 32h |  |  |
| 35 | 3.2.5 | 可行性分析报告修订稿 | milestone, manual | 0d | 2017-10-25 A | 2017-10-25 A |  | 100% |  |  |  |  |  |  |
| 36 | 3.3 | **需求分析前准备任务** |  | 5d | 2017-11-01 | 2017-11-07 | 30 |  |  |  | 120h |  |  |  |
| 37 | 3.3.1 | 修改项目计划，可行性分析 | manual | 1d? | 2017-11-01 | 2017-11-01 |  |  |  |  |  |  |  |  |
| 38 | 3.3.2 | 更新项目计划，可行性分析 | manual | 3d | 2017-11-01 | 2017-11-03 | 24 |  |  | 吕莉; 吴安之 | 48h |  | 陈董锴 | 在SRS文档生成前再次调整前面的工作 |
| 39 | 3.3.3 | 熟悉Python网页开发框架 | manual | 1d | 2017-11-03 | 2017-11-03 |  |  |  | 陈董锴 | 8h |  |  | 由于陈董锴对Python语言接触较多，所以会更快的熟悉此框架开发来分享 |
| 40 | 3.3.4 | 按新的构建再次改进原型 | manual | 2d | 2017-11-01 | 2017-11-02 |  |  |  | 吴安之 | 16h |  |  | 原型暂时放置网页端，在下次里程碑之前移植到 |
| 41 | 3.3.5 | 11月1日会议 | manual | 1d | 2017-11-01 | 2017-11-01 |  |  |  | 陈董锴; 吕莉; 吴安之 | 24h |  | 陈董锴 | 检查可行性分析前过程，准备需求分析 |
| 42 | 3.3.6 | 11月7日额外长时间会议，查询资料，讨论 | manual | 1d | 2017-11-07 | 2017-11-07 |  |  |  | 陈董锴; 吕莉; 吴安之 | 24h |  | 陈董锴 | 项目发现运行问题，急需修改方向，分配前置任务的修订 |
| 43 | 4 | **需求分析** |  | 11d | 2017-11-07 | 2017-11-21 | 23 |  |  |  | 160h |  | 吴安之 |  |
| 44 | 4.1 | 修订项目简介，根据新的用户目标 | manual | 1d | 2017-11-08 | 2017-11-08 | 42 |  |  | 陈董锴 | 8h |  |  |  |
| 45 | 4.2 | 修订进度计划和项目计划以及相关PPT | manual | 2d | 2017-11-09 | 2017-11-10 | 42 |  |  | 吴安之 | 16h |  |  |  |
| 46 | 4.3 | 提供需求分析细分步骤 | manual | 1d | 2017-11-08 | 2017-11-08 | 42 |  |  | 吕莉 | 8h |  |  |  |
| 47 | 4.4 | ·11月10日小组会议 | manual | 1d | 2017-11-09 | 2017-11-09 | 46 |  |  | 陈董锴; 吕莉; 吴安之 | 24h |  | 吴安之 | 讨论新计划的实施资料总结，并分配后续需求分析任务 |
| 48 | 4.5 | 新原型主界面及主功能体现设计 | manual | 2d | 2017-11-10 | 2017-11-11 | 47 |  |  | 吴安之 | 16h |  |  | 要求能够展示整个过程 |
| 49 | 4.6 | 修订可行性分析新系统的数据处理流程 | manual | 2d | 2017-11-12 | 2017-11-13 |  |  |  | 吴安之 | 16h |  |  |  |
| 50 | 4.7 | 用户的访谈 | manual | 2d | 2017-11-10 | 2017-11-11 | 47 |  |  | 陈董锴 | 16h |  |  | 用户访谈的输出结果将传输给两个组员作为资源 |
| 51 | 4.8 | 根据新原型的寻找新的建议系统 | manual | 1d | 2017-11-10 | 2017-11-10 | 47 |  |  | 陈董锴 | 8h |  |  |  |
| 52 | 4.9 | 根据新的讨论系统定义功能 | manual | 1d | 2017-11-10 | 2017-11-10 | 47 |  |  | 吕莉 | 8h |  |  |  |
| 53 | 4.10 | 表示系统各个层次与流程的图示绘制 | manual | 1d | 2017-11-10 | 2017-11-10 | 47 |  |  | 吕莉; 吴安之 | 16h |  |  |  |
| 54 | 4.11 | 根据功能定义再次优化原系统 | manual | 1d | 2017-11-13 | 2017-11-13 | 52 |  |  | 吴安之 | 8h |  |  |  |
| 55 | 4.12 | 结合已有关键信息，拟定SRS其他细节以及初稿的修订 | manual | 2d | 2017-11-13 | 2017-11-14 | 53 |  |  | 吕莉 | 16h |  |  |  |
| 56 | 4.13 | SRS最终修订 | milestone, manual | 0d | 2017-11-07 | 2017-11-07 |  |  |  | 陈董锴 |  |  | 陈董锴 |  |

| ID | WBS | Task | Type | Duration | Start | Finish | Predecessors | Resources | Work | 负责人 |
| --- | --- | --- | --- | --- | --- | --- | --- | --- | --- | --- |
| 57 | 5 | **总体设计** |  | 16d | 2017-11-15 | 2017-12-06 | 43 |  | 216h | 吴安之 |
| 58 | 5.1 | 总体设计报告 | manual | 6d | 2017-11-15 | 2017-11-22 |  | 吕莉; 吴安之; 陈董锴 | 144h |  |
| 59 | 5.2 | 总体设计报告修订 | manual | 3d | 2017-12-01 | 2017-12-05 |  | 吕莉; 吴安之; 陈董锴 | 72h |  |
| 60 | 5.3 | 总体设计报告 | milestone, manual | 0d | 2017-11-15 | 2017-11-15 |  |  |  |  |
| 61 | 6 | **详细设计** |  | 16d | 2017-11-15 | 2017-12-06 | 57 |  | 288h | 陈董锴 |
| 62 | 6.1 | **详细设计报告** |  | 6d | 2017-11-23 | 2017-11-30 | 58 | 吕莉; 吴安之; 陈董锴 | 288h |  |
| 63 | 6.1.1 | 数据库设计 | manual | 6d | 2017-11-23 | 2017-11-30 |  | 陈董锴 | 48h |  |
| 64 | 6.1.2 | 子系统设计 | manual | 6d | 2017-11-23 | 2017-11-30 |  | 吴安之 | 48h |  |
| 65 | 6.1.3 | 界面设计 | manual | 6d | 2017-11-23 | 2017-11-30 |  | 吕莉 | 48h |  |
| 66 | 7 | 详细设计报告修订 | manual | 3d | 2017-12-07 | 2017-12-11 | 61 | 吕莉; 吴安之; 陈董锴 | 72h |  |
| 67 | 8 | 总体设计报告，详细设计报告以及PPT | milestone, manual | 0d | 2017-09-27 | 2017-09-27 |  |  |  |  |
| 68 | 9 | **编码测试** |  | 16d | 2017-12-06 | 2017-12-27 | 61 |  | 960h | 吕莉 |
| 69 | 9.1 | 学习更深层次的前端技术 | manual | 3d | 2017-11-23 | 2017-11-27 |  | 陈董锴; 吕莉 | 48h |  |
| 70 | 9.2 | 开始学习Ajax/Boostrap | manual | 5d | 2017-11-29 | 2017-12-05 | 69 | 陈董锴 | 40h |  |
| 71 | 9.3 | **可访问浏览获取信息及代码清单测试用例** |  | 7d | 2017-12-06 | 2017-12-14 |  | 陈董锴 | 280h |  |
| 72 | 9.3.1 | 完成平台搭建及后台部署 | manual | 5d | 2017-12-06 | 2017-12-12 |  | 吴安之 | 40h |  |
| 73 | 9.3.2 | 代码清单以及测试用例 | manual | 7d | 2017-12-06 | 2017-12-14 |  | 陈董锴; 吕莉; 吴安之 | 168h |  |
| 74 | 9.3.3 | 能够正常访问及获取相关商品信息 | manual | 2d | 2017-12-13 | 2017-12-14 | 72 | 陈董锴 | 16h |  |
| 75 | 9.3.4 | 代码清单+测试用例 | milestone, manual | 0d | 2017-12-06 | 2017-12-06 |  |  |  |  |
| 76 | 9.4 | **用户(会员)登录注册** |  | 7d | 2017-12-14 | 2017-12-22 |  |  | 112h |  |
| 77 | 9.4.1 | 基本注册 | manual | 2d | 2017-12-14 | 2017-12-15 |  | 陈董锴 | 16h |  |
| 78 | 9.4.2 | 基本登录 | manual | 2d | 2017-12-18 | 2017-12-19 | 77 | 陈董锴; 吴安之 | 32h |  |
| 79 | 9.4.3 | 登录状态监测 | manual | 1d | 2017-12-20 | 2017-12-20 | 78 | 吕莉 | 8h |  |
| 80 | 9.4.4 | 系统测试报告 | manual | 7d | 2017-12-14 | 2017-12-22 |  | 吕莉 | 56h |  |
| 81 | 9.4.5 | 系统测试报告 | milestone, manual | 0d | 2017-12-14 | 2017-12-14 |  |  |  |  |

| ID | WBS | Task | Type | Duration | Start | Finish | Predecessors | Resources | Work | 负责人 | 项目调整备注 |
| --- | --- | --- | --- | --- | --- | --- | --- | --- | --- | --- | --- |
| 82 | 9.5 | **客户留言及咨询** |  | 4d | 2017-12-23 | 2017-12-27 |  | 陈董锴; 吕莉; 吴安之 | 96h |  |  |
| 83 | 9.5.1 | 留言操作 | manual | 1d | 2017-12-23 | 2017-12-23 |  |  |  |  |  |
| 84 | 9.5.2 | 与账户子系统连接 | manual | 2d | 2017-12-24 | 2017-12-25 |  |  |  |  |  |
| 85 | 9.5.3 | 测试报告修订 | milestone, manual | 0d | 2017-12-23 | 2017-12-23 |  |  |  |  |  |
| 86 | 9.6 | **测试** |  | 16d | 2017-12-06 | 2017-12-27 |  | 吕莉; 吴安之; 陈董锴 | 384h |  |  |
| 87 | 9.6.1 | 子系统测试 | manual | 1d? | 2017-12-06 | 2017-12-06 |  |  |  |  |  |
| 88 | 9.6.2 | 系统测试 | manual | 3d | 2017-12-07 | 2017-12-11 | 87 |  |  |  |  |
| 89 | 9.6.3 | 验收测试 | manual | 5d | 2017-12-12 | 2017-12-16 | 88 |  |  |  |  |
| 90 | 9.6.4 | 平行测试 | manual | 4d | 2017-12-18 | 2017-12-21 | 89 |  |  |  |  |
| 91 | 10 | **维护** |  | 8d | 2017-12-27 | 2018-01-05 | 68 |  | 96h | 陈董锴 | 维护时间可有延迟，直至改软件完全不再使用 |
| 92 | 10.1 | 功能该进 | manual | 4d | 2017-12-27 | 2018-01-01 |  | 吕莉; 吴安之 | 64h |  |  |
| 93 | 10.2 | 功能修正 | manual | 4d | 2018-01-01 | 2018-01-04 |  | 吕莉 | 32h |  |  |
| 94 | 10.3 | 项目总结报告，总评审PPT | milestone, manual | 0d | 2017-12-27 | 2017-12-27 |  |  |  |  |  |
